How a schedule from MS Project changed from version to version. A marks actual dates.

## Version 1 (saved 2025-11-03)

Note of the change: refactor/Adicionei um RFS a mais

| ID | WBS | Task | Duration | Start | Finish | Predecessors | Total float |
| --- | --- | --- | --- | --- | --- | --- | --- |
| 1 | 1 | **Sistema de Gestão Imobiliária (Release 00)** | 45.62d? | 2025-11-03 | 2026-01-05 |  | 0d |
| 2 | 1.1 | **Prospecção** | 10.25d | 2025-11-03 | 2025-11-17 |  | 0d |
| 3 | 1.1.1 | **PTEC** | 6.25d | 2025-11-03 | 2025-11-11 |  | 0d |
| 4 |  | Estudar Domínio de Aplicação | 1.5d | 2025-11-03 | 2025-11-04 |  | 0d |
| 5 |  | Reunir-se com o fornecedor de requisitos | 1d | 2025-11-04 | 2025-11-05 | 4 | 0.5d |
| 6 |  | Redigir Proposta Técnica | 1.25d | 2025-11-06 | 2025-11-10 | 5 | 0d |
| 7 |  | Revisar Proposta Técnica | 1d | 2025-11-10 | 2025-11-11 | 6 | 0d |
| 8 |  | Aprovar Proposta Técnica | 0d | 2025-11-11 | 2025-11-11 | 7 | 0d |
| 9 | 1.1.2 | **Estrutura Preliminar de Tamanho** | 2d | 2025-11-11 | 2025-11-13 |  | 0d |
| 10 |  | Estimar Tamanho do Projeto | 1d | 2025-11-11 | 2025-11-12 | 8 | 0d |
| 11 |  | Revisar Estimativa de Tamanho do Projeto | 1d | 2025-11-12 | 2025-11-13 | 10 | 0d |
| 12 | 1.1.3 | **Estrutura Preliminar de Cronograma e Orçamento** | 2d | 2025-11-13 | 2025-11-17 |  | 0d |
| 13 |  | Elaborar Cronograma e Orçamento Preliminares | 1d | 2025-11-13 | 2025-11-14 | 9 | 0d |
| 14 |  | Revisar Cronograme e Orçamento Preliminares | 1d | 2025-11-14 | 2025-11-17 | 13 | 0d |
| 15 | 1.2 | **Análise** | 10d? | 2025-11-17 | 2025-12-01 |  | 0d |
| 16 | 1.2.1 | **Documento de Requisitos** | 8d? | 2025-11-17 | 2025-11-27 |  | 0d |
| 17 |  | Reunir-se com o cliente | 1d? | 2025-11-17 | 2025-11-19 | 14 | 0d |
| 18 |  | Elaborar DRE | 3d? | 2025-11-19 | 2025-11-24 | 17 | 0d |
| 19 |  | Revisar DRE | 1d? | 2025-11-24 | 2025-11-25 | 18 | 0d |
| 20 |  | Submeter DRE para aprovação do cliente | 1d? | 2025-11-25 | 2025-11-27 | 19 | 0d |
| 21 | 1.2.2 | **MRB** | 2d? | 2025-11-27 | 2025-12-01 |  | 0d |
| 22 |  | Elaborar MRB | 1d? | 2025-11-27 | 2025-11-28 | 20 | 0d |
| 23 |  | Revisar MRB | 1d? | 2025-11-28 | 2025-12-01 | 22 | 0d |
| 24 | 1.3 | **Projeto** | 45.62d? | 2025-11-03 | 2026-01-05 |  | 0d |
| 25 | 1.3.1 | **Diagrama de Classes** | 4d? | 2025-12-01 | 2025-12-05 |  | 0d |
| 26 |  | Elaborar Diagrama de Classes | 2d? | 2025-12-01 | 2025-12-03 | 23 | 0d |
| 27 |  | Revisar Diagrama de Classes | 1d? | 2025-12-03 | 2025-12-04 | 26 | 0d |
| 28 |  | Atualizar MRB | 1d? | 2025-12-04 | 2025-12-05 | 27 | 0d |
| 29 | 1.3.2 | **Modelo Entidade Relacionamento** | 3d? | 2025-12-05 | 2025-12-10 |  | 0d |
| 30 |  | Elaborar MER | 1d? | 2025-12-05 | 2025-12-08 | 28 | 0d |
| 31 |  | Revisar MER | 1d? | 2025-12-08 | 2025-12-10 | 30 | 0d |
| 32 | 1.3.3 | **Implementação** | 45.62d? | 2025-11-03 | 2026-01-05 |  | 0d |
| 33 | 1.3.3.1 | **Release 01** | 6d? | 2025-12-10 | 2025-12-18 |  | 0d |
| 34 | 1.3.3.1.1 | **Implementação** | 4d? | 2025-12-10 | 2025-12-16 |  | 0d |
| 35 | 1.3.3.1.1.1 | **RFC01** | 4d? | 2025-12-10 | 2025-12-16 |  | 0d |
| 36 |  | Implementar RFS01 | 1d? | 2025-12-10 | 2025-12-11 | 31 | 0d |
| 37 |  | Implementar RFS02 | 1d? | 2025-12-11 | 2025-12-12 | 36 | 0d |
| 38 |  | Implementar RFS03 | 1d? | 2025-12-12 | 2025-12-15 | 37 | 0d |
| 39 |  | Implementar RFS04 | 1d? | 2025-12-15 | 2025-12-16 | 38 | 0d |
| 40 | 1.3.3.1.1.2 | **RFC02** | 4d | 2025-12-10 | 2025-12-16 |  | 8.38d |
| 41 |  | Implementar RFS05 | 1d | 2025-12-10 | 2025-12-11 | 31 | 8.38d |
| 42 |  | Implementar RFS06 | 1d | 2025-12-11 | 2025-12-12 | 41 | 8.38d |
| 43 |  | Implementar RFS07 | 1d | 2025-12-12 | 2025-12-15 | 42 | 8.38d |
| 44 |  | Implementar RFS08 | 1d | 2025-12-15 | 2025-12-16 | 43 | 8.38d |
| 45 | 1.3.3.1.2 | **Teste** | 2d? | 2025-12-16 | 2025-12-18 |  | 0d |
| 46 |  | Testar RC01 | 1d? | 2025-12-16 | 2025-12-18 | 39 | 0d |
| 47 |  | Testar RC02 | 1d? | 2025-12-16 | 2025-12-17 | 44 | 8.38d |
| 48 | 1.3.3.2 | **Release 02** | 5.12d? | 2025-12-17 | 2025-12-24 |  | 1d |
| 49 | 1.3.3.2.1 | **Implementação** | 5.12d? | 2025-12-17 | 2025-12-24 |  | 1d |
| 50 | 1.3.3.2.1.1 | **RFC03** | 4d | 2025-12-17 | 2025-12-23 |  | 8.38d |
| 51 |  | Implementar RFS09 | 1d | 2025-12-17 | 2025-12-18 | 47 | 8.38d |
| 52 |  | Implementar RFS10 | 1d | 2025-12-18 | 2025-12-19 | 51 | 8.38d |
| 53 |  | Implementar RFS11 | 1d | 2025-12-19 | 2025-12-22 | 52 | 8.38d |
| 54 |  | Implementar RFS12 | 1d | 2025-12-22 | 2025-12-23 | 53 | 8.38d |
| 55 | 1.3.3.2.1.2 | **RFC04** | 4d | 2025-12-18 | 2025-12-24 |  | 0d |
| 56 |  | Implementar RFS13 | 1d | 2025-12-18 | 2025-12-19 | 46 | 0d |
| 57 |  | Implementar RFS14 | 1d | 2025-12-19 | 2025-12-22 | 56 | 0d |
| 58 |  | Implementar RFS15 | 1d | 2025-12-22 | 2025-12-23 | 57 | 0d |
| 59 |  | Implementar RFS16 | 1d | 2025-12-23 | 2025-12-24 | 58 | 0d |
| 60 | 1.3.3.2.1.3 | **Teste** | 1.12d? | 2025-12-23 | 2025-12-24 |  | 1d |
| 61 |  | Testar RFC03 | 1d | 2025-12-23 | 2025-12-24 | 54 | 8.38d |
| 62 |  | Testar RFC04 | 0.12d? | 2025-12-24 | 2025-12-24 | 59 | 0d |
| 63 | 1.3.3.3 | **Release 03** | 41.5d? | 2025-11-03 | 2025-12-30 |  | 4.12d |
| 64 | 1.3.3.3.1 | **RFC05** | 1d? | 2025-12-24 | 2025-12-25 |  | 0d |
| 65 |  | Implementar RFS17 | 1d? | 2025-12-24 | 2025-12-25 | 62 | 0d |
| 66 | 1.3.3.3.2 | **RFC06** | 2d? | 2025-12-25 | 2025-12-29 |  | 0d |
| 67 |  | Implementar RFS18 | 1d? | 2025-12-25 | 2025-12-29 | 65 | 0d |
| 68 | 1.3.3.3.3 | **RFC07** | 41.38d? | 2025-11-03 | 2025-12-30 |  | 4.25d |
| 69 |  | Implementar RFS19 | 1d? | 2025-12-29 | 2025-12-30 | 67 | 0d |
| 70 |  | Implementar RFS20 | 1d? | 2025-11-03 | 2025-11-03 |  | 44.62d |

| ID | WBS | Task | Duration | Start | Finish | Predecessors | Total float |
| --- | --- | --- | --- | --- | --- | --- | --- |
| 71 | 1.3.3.3.4 | **Teste** | 41.5d? | 2025-11-03 | 2025-12-30 |  | 4.12d |
| 72 |  | Testar RFC05 | 1d? | 2025-12-25 | 2025-12-26 | 65 | 6.25d |
| 73 |  | Testar RFC06 | 1d? | 2025-12-29 | 2025-12-30 | 67 | 4.25d |
| 74 |  | Testar RFC07 | 0.12d? | 2025-12-30 | 2025-12-30 | 69 | 0d |
| 75 |  | Testar RFC07 | 1d? | 2025-11-03 | 2025-11-03 |  | 44.62d |
| 76 | 1.3.3.4 | **Release 04** | 2d? | 2025-12-30 | 2026-01-01 |  | 0d |
| 77 |  | Inteligência do Sistema | 1d? | 2025-12-30 | 2025-12-31 | 74 | 0d |
| 78 |  | Testar Inteligência do Sistema | 1d? | 2025-12-31 | 2026-01-01 | 77 | 0d |
| 79 | 1.3.3.5 | **Monitoramento e Controle** | 1d? | 2026-01-01 | 2026-01-02 |  | 0d |
| 80 |  | Acompanhar Projeto | 1d? | 2026-01-01 | 2026-01-02 | 78 | 0d |
| 81 | 1.3.3.6 | **Gerência de Configuração** | 1.12d? | 2026-01-02 | 2026-01-05 |  | 0d |
| 82 |  | Elaborar Branch | 1d? | 2026-01-02 | 2026-01-05 | 80 | 0d |
| 83 |  | Realizar Merge da Branch X para a Trunk | 0.12d? | 2026-01-05 | 2026-01-05 | 82 | 0d |

## Version 2 (saved 2025-11-11)

Note of the change: docs/CRO e DRE

Last finish 2026-01-05 → 2026-01-08 (+3d). Complete tasks 0 → 30.

Added:

| ID | Task | Duration | Start | Finish | Predecessors | Resources |
| --- | --- | --- | --- | --- | --- | --- |
| 70 | Implementar RFS21 | 1.5d? | 2026-01-02 | 2026-01-06 | 65 | Boaz [25%] |
| 71 | Implementar RFS22 | 0.38d | 2025-11-03 | 2025-11-03 |  | Gustavo |
| 73 | Implementar RFS23 | 1.5d? | 2025-11-03 | 2025-11-04 |  | Matheus [25%] |

Changed:

| ID | Task | Start | Finish | Duration | Complete | Total float | Predecessors | Other |
| --- | --- | --- | --- | --- | --- | --- | --- | --- |
| 1 | **Sistema de Gestão Imobiliária (Release 00)** | 2025-11-03 A | 2026-01-05 → 2026-01-08 (+3d) | 45.62d? → 48.5d? | 0% → 55% |  |  |  |
| 2 | **Prospecção** | 2025-11-03 A | 2025-11-17 → 2025-11-12 A (-5d) | 10.25d → 7.69d | 0% → 100% | 0d → none |  |  |
| 3 | **PTEC** | 2025-11-03 A | 2025-11-11 → 2025-11-10 A (-1d) | 6.25d → 5.38d | 0% → 100% | 0d → none |  |  |
| 4 | Estudar Domínio de Aplicação | 2025-11-03 A | 2025-11-04 → 2025-11-03 A (-1d) | 1.5d → 1d | 0% → 100% | 0d → none |  | resources Matheus; Boaz; Caio; Gustavo → Matheus |
| 5 | Reunir-se com o fornecedor de requisitos | 2025-11-04 A | 2025-11-05 → 2025-11-04 A (-1d) |  | 0% → 100% | 0.5d → none |  |  |
| 6 | Redigir Proposta Técnica | 2025-11-06 → 2025-11-05 A (-1d) | 2025-11-10 → 2025-11-07 A (-3d) |  | 0% → 100% | 0d → none |  |  |
| 7 | Revisar Proposta Técnica | 2025-11-10 → 2025-11-07 A (-3d) | 2025-11-11 → 2025-11-10 A (-1d) |  | 0% → 100% | 0d → none |  |  |
| 8 | Aprovar Proposta Técnica | 2025-11-11 → 2025-11-10 A (-1d) | 2025-11-11 → 2025-11-10 A (-1d) | 0d → 0.12d | 0% → 100% | 0d → none |  |  |
| 9 | **Estrutura Preliminar de Tamanho** | 2025-11-11 → 2025-11-10 A (-1d) | 2025-11-13 → 2025-11-10 A (-3d) | 2d → 0.19d | 0% → 100% | 0d → none |  |  |
| 10 | Estimar Tamanho do Projeto | 2025-11-11 → 2025-11-10 A (-1d) | 2025-11-12 → 2025-11-10 A (-2d) | 1d → 0.06d | 0% → 100% | 0d → none |  |  |
| 11 | Revisar Estimativa de Tamanho do Projeto | 2025-11-12 → 2025-11-10 A (-2d) | 2025-11-13 → 2025-11-10 A (-3d) | 1d → 0.12d | 0% → 100% | 0d → none |  |  |
| 12 | **Estrutura Preliminar de Cronograma e Orçamento** | 2025-11-13 → 2025-11-10 A (-3d) | 2025-11-17 → 2025-11-12 A (-5d) | 2d → 2.12d | 0% → 100% | 0d → none |  |  |
| 13 | Elaborar Cronograma e Orçamento Preliminares | 2025-11-13 → 2025-11-10 A (-3d) | 2025-11-14 → 2025-11-11 A (-3d) | 1d → 1.12d | 0% → 100% | 0d → none |  |  |
| 14 | Revisar Cronograme e Orçamento Preliminares | 2025-11-14 → 2025-11-11 A (-3d) | 2025-11-17 → 2025-11-12 A (-5d) |  | 0% → 100% | 0d → none |  |  |
| 15 | **Análise** | 2025-11-17 → 2025-11-13 A (-4d) | 2025-12-01 → 2025-11-26 A (-5d) | 10d? → 9.83d? | 0% → 100% | 0d → none |  |  |
| 16 | **Documento de Requisitos** | 2025-11-17 → 2025-11-13 A (-4d) | 2025-11-27 → 2025-11-24 A (-3d) | 8d? → 7.5d? | 0% → 100% | 0d → none |  |  |
| 17 | Reunir-se com o cliente | 2025-11-17 → 2025-11-13 A (-4d) | 2025-11-19 → 2025-11-14 A (-5d) |  | 0% → 100% | 0d → none |  |  |
| 18 | Elaborar DRE | 2025-11-19 → 2025-11-14 A (-5d) | 2025-11-24 → 2025-11-19 A (-5d) |  | 0% → 100% | 0d → none |  |  |
| 19 | Revisar DRE | 2025-11-24 → 2025-11-19 A (-5d) | 2025-11-25 → 2025-11-20 A (-5d) | 1d? → 1.5d? | 0% → 100% | 0d → none |  |  |
| 20 | Submeter DRE para aprovação do cliente | 2025-11-25 → 2025-11-21 A (-4d) | 2025-11-27 → 2025-11-24 A (-3d) |  | 0% → 100% | 0d → none |  |  |
| 21 | **MRB** | 2025-11-27 → 2025-11-24 A (-3d) | 2025-12-01 → 2025-11-26 A (-5d) | 2d? → 2.33d? | 0% → 100% | 0d → none |  |  |
| 22 | Elaborar MRB | 2025-11-27 → 2025-11-24 A (-3d) | 2025-11-28 → 2025-11-25 A (-3d) | 1d? → 1.33d? | 0% → 100% | 0d → none |  |  |
| 23 | Revisar MRB | 2025-11-28 → 2025-11-25 A (-3d) | 2025-12-01 → 2025-11-26 A (-5d) |  | 0% → 100% | 0d → none |  |  |
| 24 | **Projeto** | 2025-11-03 A | 2026-01-05 → 2026-01-08 (+3d) | 45.62d? → 48.5d? | 0% → 43% |  |  |  |
| 25 | **Diagrama de Classes** | 2025-12-01 → 2025-11-26 A (-5d) | 2025-12-05 → 2025-12-04 A (-1d) | 4d? → 6d? | 0% → 100% | 0d → none |  |  |
| 26 | Elaborar Diagrama de Classes | 2025-12-01 → 2025-11-26 A (-5d) | 2025-12-03 → 2025-11-28 A (-5d) |  | 0% → 100% | 0d → none |  |  |
| 27 | Revisar Diagrama de Classes | 2025-12-03 → 2025-11-28 A (-5d) | 2025-12-04 → 2025-12-02 A (-2d) | 1d? → 2d? | 0% → 100% | 0d → none |  |  |
| 28 | Atualizar MRB | 2025-12-04 → 2025-12-02 A (-2d) | 2025-12-05 → 2025-12-04 A (-1d) | 1d? → 2d? | 0% → 100% | 0d → none |  |  |
| 29 | **Modelo Entidade Relacionamento** | 2025-12-05 → 2025-12-04 A (-1d) | 2025-12-10 → 2025-12-09 A (-1d) | 3d? → 2.67d? | 0% → 100% | 0d → none |  |  |
| 30 | Elaborar MER | 2025-12-05 → 2025-12-04 A (-1d) | 2025-12-08 → 2025-12-05 A (-3d) |  | 0% → 100% | 0d → none |  |  |
| 31 | Revisar MER | 2025-12-08 A | 2025-12-10 → 2025-12-09 A (-1d) |  | 0% → 100% | 0d → none |  |  |
| 32 | **Implementação** | 2025-11-03 A | 2026-01-05 → 2026-01-08 (+3d) | 45.62d? → 48.5d? | 0% → 33% |  |  |  |
| 33 | **Release 01** | 2025-12-10 → 2025-12-09 A (-1d) | 2025-12-18 → 2025-12-29 A (+11d) | 6d? → 14d? | 0% → 100% | 0d → none |  |  |
| 34 | **Implementação** | 2025-12-10 → 2025-12-09 A (-1d) | 2025-12-16 → 2025-12-25 A (+9d) | 4d? → 12d? | 0% → 100% | 0d → none |  |  |
| 35 | **RFC01** | 2025-12-10 → 2025-12-09 A (-1d) | 2025-12-16 → 2025-12-17 A (+1d) | 4d? → 6d? | 0% → 100% | 0d → none |  | resources Gustavo → none |
| 36 | Implementar RFS01 | 2025-12-10 → 2025-12-09 A (-1d) | 2025-12-11 → 2025-12-10 A (-1d) | 1d? → 1.5d? | 0% → 100% | 0d → none |  | resources none → Gustavo [25%] |
| 37 | Implementar RFS02 | 2025-12-11 A | 2025-12-12 A | 1d? → 1.5d? | 0% → 100% | 0d → none |  | resources none → Gustavo [25%] |
| 38 | Implementar RFS03 | 2025-12-12 A | 2025-12-15 A | 1d? → 1.5d? | 0% → 100% | 0d → none |  | resources none → Gustavo [25%] |
| 39 | Implementar RFS04 | 2025-12-15 → 2025-12-16 A (+1d) | 2025-12-16 → 2025-12-17 A (+1d) | 1d? → 1.5d? | 0% → 100% | 0d → none |  | resources none → Gustavo [25%] |
| 40 | **RFC02** | 2025-12-10 A | 2025-12-16 → 2025-12-25 A (+9d) | 4d → 11.5d | 0% → 100% | 8.38d → none |  | resources Boaz → none |
| 41 | Implementar RFS05 | 2025-12-10 A | 2025-12-11 → 2025-12-12 A (+1d) | 1d → 1.5d | 0% → 100% | 8.38d → none |  | resources none → Boaz [25%] |
| 42 | Implementar RFS06 | 2025-12-11 → 2025-12-15 A (+4d) | 2025-12-12 → 2025-12-17 A (+5d) | 1d → 1.5d | 0% → 100% | 8.38d → none |  | resources none → Boaz [25%] |
| 43 | Implementar RFS07 | 2025-12-12 → 2025-12-18 A (+6d) | 2025-12-15 → 2025-12-22 A (+7d) | 1d → 1.5d | 0% → 100% | 8.38d → none |  | resources none → Boaz [25%] |
| 44 | Implementar RFS08 | 2025-12-15 → 2025-12-23 A (+8d) | 2025-12-16 → 2025-12-25 A (+9d) | 1d → 1.5d | 0% → 100% | 8.38d → none |  | resources none → Boaz [25%] |
| 45 | **Teste** | 2025-12-16 → 2025-12-18 A (+2d) | 2025-12-18 → 2025-12-29 A (+11d) | 2d? → 7.5d? | 0% → 100% | 0d → none |  |  |
| 46 | Testar RC01 | 2025-12-16 → 2025-12-18 A (+2d) | 2025-12-18 → 2025-12-23 A (+5d) | 1d? → 2d? | 0% → 100% | 0d → none |  |  |
| 47 | Testar RC02 | 2025-12-16 → 2025-12-25 A (+9d) | 2025-12-17 → 2025-12-29 A (+12d) | 1d? → 2d? | 0% → 100% | 8.38d → none |  |  |
| 48 | **Release 02** | 2025-12-17 → 2025-12-23 (+6d) | 2025-12-24 → 2026-01-08 (+15d) | 5.12d? → 12d? |  | 1d → 0d |  |  |
| 49 | **Implementação** | 2025-12-17 → 2025-12-23 (+6d) | 2025-12-24 → 2026-01-08 (+15d) | 5.12d? → 12d? |  | 1d → 0d |  |  |
| 50 | **RFC03** | 2025-12-17 → 2025-12-29 (+12d) | 2025-12-23 → 2026-01-06 (+14d) | 4d → 6d |  | 8.38d → 0d |  | resources Caio → none |
| 51 | Implementar RFS09 | 2025-12-17 → 2025-12-29 (+12d) | 2025-12-18 → 2025-12-30 (+12d) | 1d → 1.5d |  | 8.38d → 0d |  | resources none → Caio [25%] |
| 52 | Implementar RFS10 | 2025-12-18 → 2025-12-31 (+13d) | 2025-12-19 → 2026-01-01 (+13d) | 1d → 1.5d |  | 8.38d → 0d |  | resources none → Caio [25%] |
| 53 | Implementar RFS11 | 2025-12-19 → 2026-01-01 (+13d) | 2025-12-22 → 2026-01-02 (+11d) | 1d → 1.5d |  | 8.38d → 0d |  | resources none → Caio [25%] |
| 54 | Implementar RFS12 | 2025-12-22 → 2026-01-05 (+14d) | 2025-12-23 → 2026-01-06 (+14d) | 1d → 1.5d |  | 8.38d → 0d |  | resources none → Caio [25%] |
| 55 | **RFC04** | 2025-12-18 → 2025-12-23 (+5d) | 2025-12-24 → 2025-12-31 (+7d) | 4d → 6d |  | 0d → 0.25d |  | resources Matheus → none |
| 56 | Implementar RFS13 | 2025-12-18 → 2025-12-23 (+5d) | 2025-12-19 → 2025-12-24 (+5d) | 1d → 1.5d |  | 0d → 0.25d |  | resources none → Matheus [25%] |
| 57 | Implementar RFS14 | 2025-12-19 → 2025-12-25 (+6d) | 2025-12-22 → 2025-12-26 (+4d) | 1d → 1.5d |  | 0d → 0.25d |  | resources none → Matheus [25%] |
| 58 | Implementar RFS15 | 2025-12-22 → 2025-12-26 (+4d) | 2025-12-23 → 2025-12-29 (+6d) | 1d → 1.5d |  | 0d → 0.25d |  | resources none → Matheus [25%] |
| 59 | Implementar RFS16 | 2025-12-23 → 2025-12-30 (+7d) | 2025-12-24 → 2025-12-31 (+7d) | 1d → 1.5d |  | 0d → 0.25d |  | resources none → Matheus [25%] |
| 60 | **Teste** | 2025-12-23 → 2025-12-31 (+8d) | 2025-12-24 → 2026-01-08 (+15d) | 1.12d? → 6d? |  | 1d → 0d |  |  |
| 61 | Testar RFC03 | 2025-12-23 → 2026-01-06 (+14d) | 2025-12-24 → 2026-01-08 (+15d) | 1d → 2d |  | 8.38d → 0d |  |  |
| 62 | Testar RFC04 | 2025-12-24 → 2025-12-31 (+7d) | 2025-12-24 → 2025-12-31 (+7d) | 0.12d? → 0.25d? |  | 0d → 0.25d |  |  |
| 63 | **Release 03** |  | 2025-12-30 → 2026-01-08 (+9d) | 41.5d? → 48.5d? |  | 4.12d → 0d |  |  |
| 64 | **RFC05** | 2025-12-24 → 2025-11-03 (-51d) | 2025-12-25 → 2026-01-01 (+7d) | 1d? → 43.75d? |  | 0d → 4.75d |  |  |
| 65 | Implementar RFS17 | 2025-12-24 → 2025-12-31 (+7d) | 2025-12-25 → 2026-01-01 (+7d) |  |  | 0d → 0.25d |  |  |
| 66 | Implementar RFS18 | 2025-12-25 → 2025-11-03 (-52d) | 2025-12-29 → 2025-11-03 (-56d) | 1d? → 0.25d? |  | 0d → 48.25d | 65 → none | resources Boaz [25%] → Boaz |
| 67 | Implementar RFS19 | 2025-12-29 → 2025-11-03 (-56d) | 2025-12-30 → 2025-11-03 (-57d) | 1d? → 0.25d? |  | 0d → 48.25d | 66 → none | resources Gustavo [25%] → Gustavo |
| 68 | Implementar RFS20 |  |  | 1d? → 0.25d? |  | 44.62d → 48.25d |  | resources Matheus [25%] → Caio |
| 69 | **RFC06** | 2025-12-25 → 2025-11-03 (-52d) | 2025-12-29 → 2026-01-06 (+8d) | 2d? → 46.5d? |  | 0d → 2d |  |  |
| 72 | **RFC07** |  | 2025-12-30 → 2025-11-04 (-56d) | 41.38d? → 1.5d? |  | 4.25d → 47d |  |  |

| ID | Task | Start | Finish | Duration | Total float | Predecessors |
| --- | --- | --- | --- | --- | --- | --- |
| 74 | **Teste** |  | 2025-12-30 → 2026-01-08 (+9d) | 41.5d? → 48.5d? | 4.12d → 0d |  |
| 75 | Testar RFC05 | 2025-12-25 → 2026-01-01 (+7d) | 2025-12-26 → 2026-01-05 (+10d) | 1d? → 2d? | 6.25d → 2.75d |  |
| 76 | Testar RFC06 | 2025-12-29 → 2026-01-06 (+8d) | 2025-12-30 → 2026-01-08 (+9d) | 1d? → 2d? | 4.25d → 0d | 66 → 70 |
| 77 | Testar RFC07 | 2025-12-30 → 2025-11-03 (-57d) | 2025-12-30 → 2025-11-03 (-57d) | 0.12d? → 0.25d? | 0d → 41.25d | 67 → none |
| 78 | Testar RFC07 |  | 2025-11-03 → 2025-11-04 (+1d) | 1d? → 2d? | 44.62d → 46.5d |  |
| 79 | **Release 04** | 2025-12-30 → 2025-11-03 (-57d) | 2026-01-01 → 2025-11-06 (-56d) | 2d? → 3.5d? | 0d → 41.5d |  |
| 80 | Inteligência do Sistema | 2025-12-30 → 2025-11-03 (-57d) | 2025-12-31 → 2025-11-04 (-57d) | 1d? → 1.5d? | 0d → 41.5d |  |
| 81 | Testar Inteligência do Sistema | 2025-12-31 → 2025-11-04 (-57d) | 2026-01-01 → 2025-11-06 (-56d) | 1d? → 2d? | 0d → 41.5d |  |
| 82 | **Monitoramento e Controle** | 2026-01-01 → 2025-11-06 (-56d) | 2026-01-02 → 2025-11-10 (-53d) | 1d? → 1.5d? | 0d → 41.5d |  |
| 83 | Acompanhar Projeto | 2026-01-01 → 2025-11-06 (-56d) | 2026-01-02 → 2025-11-10 (-53d) | 1d? → 1.5d? | 0d → 41.5d |  |
| 84 | **Gerência de Configuração** | 2026-01-02 → 2025-11-10 (-53d) | 2026-01-05 → 2025-11-11 (-55d) | 1.12d? → 1.75d? | 0d → 41.5d |  |
| 85 | Elaborar Branch | 2026-01-02 → 2025-11-10 (-53d) | 2026-01-05 → 2025-11-11 (-55d) | 1d? → 1.5d? | 0d → 41.5d |  |
| 86 | Realizar Merge da Branch X para a Trunk | 2026-01-05 → 2025-11-11 (-55d) | 2026-01-05 → 2025-11-11 (-55d) | 0.12d? → 0.25d? | 0d → 41.5d |  |

## Version 3 (saved 2025-11-18)

Note of the change: docs/CROnograma

Last finish stays 2026-01-08. Complete tasks 30 → 40.

Removed: 84 Gerência de Configuração; 85 Elaborar Branch; 86 Realizar Merge da Branch X para a Trunk

Changed:

| ID | Task | Start | Finish | Complete | Total float |
| --- | --- | --- | --- | --- | --- |
| 1 | **Sistema de Gestão Imobiliária (Release 00)** |  |  | 55% → 77% |  |
| 24 | **Projeto** |  |  | 43% → 70% |  |
| 32 | **Implementação** |  |  | 33% → 65% |  |
| 48 | **Release 02** | 2025-12-23 A | 2026-01-08 A | 0% → 100% | 0d → none |
| 49 | **Implementação** | 2025-12-23 A | 2026-01-08 A | 0% → 100% | 0d → none |
| 50 | **RFC03** | 2025-12-29 A | 2026-01-06 A | 0% → 100% | 0d → none |
| 51 | Implementar RFS09 | 2025-12-29 A | 2025-12-30 A | 0% → 100% | 0d → none |
| 52 | Implementar RFS10 | 2025-12-31 A | 2026-01-01 A | 0% → 100% | 0d → none |
| 53 | Implementar RFS11 | 2026-01-01 A | 2026-01-02 A | 0% → 100% | 0d → none |
| 54 | Implementar RFS12 | 2026-01-05 A | 2026-01-06 A | 0% → 100% | 0d → none |
| 55 | **RFC04** | 2025-12-23 A | 2025-12-31 A | 0% → 100% | 0.25d → none |
| 56 | Implementar RFS13 | 2025-12-23 A | 2025-12-24 A | 0% → 100% | 0.25d → none |
| 57 | Implementar RFS14 | 2025-12-25 A | 2025-12-26 A | 0% → 100% | 0.25d → none |
| 58 | Implementar RFS15 | 2025-12-26 A | 2025-12-29 A | 0% → 100% | 0.25d → none |
| 59 | Implementar RFS16 | 2025-12-30 A | 2025-12-31 A | 0% → 100% | 0.25d → none |
| 60 | **Teste** | 2025-12-31 A | 2026-01-08 A | 0% → 100% | 0d → none |
| 61 | Testar RFC03 | 2026-01-06 A | 2026-01-08 A | 0% → 100% | 0d → none |
| 62 | Testar RFC04 | 2025-12-31 A | 2025-12-31 A | 0% → 100% | 0.25d → none |

## Version 4 (saved 2025-11-24)

Note of the change: feat/RFC06 e RFC07

Last finish stays 2026-01-08. Complete tasks 40 → 51.

Changed:

| ID | Task | Start | Finish | Complete | Total float |
| --- | --- | --- | --- | --- | --- |
| 1 | **Sistema de Gestão Imobiliária (Release 00)** |  |  | 77% → 93% |  |
| 24 | **Projeto** |  |  | 70% → 91% |  |
| 32 | **Implementação** |  |  | 65% → 89% |  |
| 63 | **Release 03** | 2025-11-03 A | 2026-01-08 A | 0% → 100% | 0d → none |
| 64 | **RFC05** | 2025-11-03 A | 2026-01-01 A | 0% → 100% | 4.75d → none |
| 65 | Implementar RFS17 | 2025-12-31 A | 2026-01-01 A | 0% → 100% | 0.25d → none |
| 66 | Implementar RFS18 | 2025-11-03 A | 2025-11-03 A | 0% → 100% | 48.25d → none |
| 67 | Implementar RFS19 | 2025-11-03 A | 2025-11-03 A | 0% → 100% | 48.25d → none |
| 68 | Implementar RFS20 | 2025-11-03 A | 2025-11-03 A | 0% → 100% | 48.25d → none |
| 69 | **RFC06** | 2025-11-03 A | 2026-01-06 A | 0% → 100% | 2d → none |
| 70 | Implementar RFS21 | 2026-01-02 A | 2026-01-06 A | 0% → 100% | 0d → none |
| 71 | Implementar RFS22 | 2025-11-03 A | 2025-11-03 A | 0% → 100% | 48.12d → none |
| 72 | **RFC07** | 2025-11-03 A | 2025-11-04 A | 0% → 100% | 47d → none |
| 73 | Implementar RFS23 | 2025-11-03 A | 2025-11-04 A | 0% → 100% | 47d → none |
| 74 | **Teste** | 2025-11-03 A | 2026-01-08 A | 0% → 100% | 0d → none |
| 75 | Testar RFC05 | 2026-01-01 A | 2026-01-05 A | 0% → 100% | 2.75d → none |
| 76 | Testar RFC06 | 2026-01-06 A | 2026-01-08 A | 0% → 100% | 0d → none |
| 77 | Testar RFC07 | 2025-11-03 A | 2025-11-03 A | 0% → 100% | 41.25d → none |
| 78 | Testar RFC07 | 2025-11-03 A | 2025-11-04 A | 0% → 100% | 46.5d → none |

## Version 5 (saved 2025-11-25)

Note of the change: Update CRO.mpp

Last finish stays 2026-01-08. Complete tasks 51 → 54.

Removed: 79 Release 04

Changed:

| ID | Task | Start | Finish | Duration | Complete | Total float | Predecessors | Other |
| --- | --- | --- | --- | --- | --- | --- | --- | --- |
| 1 | **Sistema de Gestão Imobiliária (Release 00)** |  | 2026-01-08 A |  | 93% → 100% | 0d → none |  |  |
| 24 | **Projeto** |  | 2026-01-08 A |  | 91% → 100% | 0d → none |  |  |
| 32 | **Implementação** |  | 2026-01-08 A |  | 89% → 100% | 0d → none |  |  |
| 79 | Inteligência do Sistema | 2025-11-03 A | 2025-11-04 → 2025-11-03 A (-1d) | 1.5d? → 1d | 0% → 100% | 41.5d → none | 77 → none | resources Caio [25%] → none |
| 80 | Testar Inteligência do Sistema | 2025-11-04 → 2025-11-03 A (-1d) | 2025-11-06 → 2025-11-05 A (-1d) |  | 0% → 100% | 41.5d → none | 79 → 77 | resources Matheus [12.5%] → Caio [25%] |
| 81 | **Monitoramento e Controle** | 2025-11-06 → 2025-11-03 A (-3d) | 2025-11-10 → 2025-11-04 A (-6d) |  | 0% → 100% | 43.25d → none |  |  |
| 82 | Acompanhar Projeto | 2025-11-06 → 2025-11-03 A (-3d) | 2025-11-10 → 2025-11-04 A (-6d) |  | 0% → 100% | 41.5d → none | 80 → none |  |
